# 自动驾驶管理系统

Schedule from a web Gantt chart, 2026-03-19 to 2026-05-16.
Every day is a working day
武汉AVP项目，自动驾驶管理系统

## Schedule

| ID | WBS | Task | Type | Duration | Start | Finish | inPeople |
| --- | --- | --- | --- | --- | --- | --- | --- |
| 2 | 1 | **AVP平台** |  | 51d | 2026-03-19 | 2026-05-08 |  |
| 3 | 1.1 | **代客泊车预约系统 （移动端）** | fixed end | 25d | 2026-04-06 | 2026-04-30 |  |
| 4 | 1.1.1 | **首页** |  | 18d | 2026-04-06 | 2026-04-23 |  |
| 5 | 1.1.1.1 | 登录注册 |  | 2d | 2026-04-06 | 2026-04-07 | 中汽研 |
| 6 | 1.1.1.2 | 用户定位展示 |  | 2d | 2026-04-07 | 2026-04-08 | 中汽研 |
| 7 | 1.1.1.3 | 车辆定位展示 |  | 2d | 2026-04-09 | 2026-04-10 | 亿连 |
| 8 | 1.1.1.4 | 停车场分布展示 |  | 2d | 2026-04-13 | 2026-04-14 | 亿连 |
| 9 | 1.1.1.5 | 车辆状态展示 |  | 3d | 2026-04-15 | 2026-04-17 | 亿连 |
| 10 | 1.1.1.6 | 一键泊车 |  | 5d | 2026-04-17 | 2026-04-21 | 亿连 |
| 11 | 1.1.1.7 | 一键召车 |  | 5d | 2026-04-17 | 2026-04-21 | 亿连 |
| 12 | 1.1.1.8 | 过程跟踪 |  | 3d | 2026-04-21 | 2026-04-23 | 亿连 |
| 13 | 1.1.2 | **个人中心** |  | 8d | 2026-04-23 | 2026-04-30 |  |
| 14 | 1.1.2.1 | 车辆管理 |  | 2d | 2026-04-23 | 2026-04-24 | 中汽研 |
| 15 | 1.1.2.2 | 预警管理 |  | 2d | 2026-04-25 | 2026-04-26 | 亿连 |
| 16 | 1.1.2.3 | 泊车记录 |  | 2d | 2026-04-27 | 2026-04-28 | 亿连 |
| 17 | 1.1.2.4 | 召车记录 |  | 2d | 2026-04-29 | 2026-04-30 | 亿连 |
| 18 | 1.2 | **代客泊车管理系统 （web端）** | fixed end | 33d | 2026-03-19 | 2026-04-20 |  |
| 19 | 1.2.1 | **首页概要** |  | 7d | 2026-03-19 | 2026-03-25 |  |
| 20 | 1.2.1.1 | 停车场统计信息 |  | 1d | 2026-03-19 | 2026-03-19 |  |
| 21 | 1.2.1.2 | 客户统计信息 |  | 1d | 2026-03-20 | 2026-03-20 |  |
| 22 | 1.2.1.3 | 车辆统计信息 |  | 1d | 2026-03-21 | 2026-03-21 |  |
| 23 | 1.2.1.4 | 停车场3D可视化 |  | 1d | 2026-03-22 | 2026-03-22 |  |
| 24 | 1.2.1.5 | 可预约车位信息 |  | 1d | 2026-03-23 | 2026-03-23 |  |
| 25 | 1.2.1.6 | 在场AVP车辆信息 |  | 1d | 2026-03-24 | 2026-03-24 |  |
| 26 | 1.2.1.7 | 在场AVP车辆预警信息 |  | 1d | 2026-03-25 | 2026-03-25 |  |
| 27 | 1.2.2 | 预约管理 |  | 1d | 2026-03-26 | 2026-03-26 |  |

Notes:
- 5: 支持微信用户一键注册和登录，通过获取微信用户手机号完成快速注册及登录。
- 6: 获取用户手机定位权限，实时展示用户位置信息。
- 7: 获取用户车辆定位权限，实时展示用户车辆位置信息。
- 8: 展示支持代客泊车停车场列表，3D可视化停车场相关数据。
- 9: 展示代客泊车车辆当前任务状态。
- 10: 向代客泊车车辆下发泊车指令并完成一键泊车，支持手动选择泊位、智能分配泊位、记忆泊车三种方式。
- 11: 向代客泊车车辆下发召车指令并完成一键召车，支持手动选择接驾点位。
- 12: 支持实时跟踪车辆泊车过程及接驾过程，掌握车辆实时动态情况。
- 14: 用户代客泊车车辆信息维护管理，主要功能包括：车辆列表查看、车辆添加、车辆编辑、车辆删除等功能。
- 15: 查询代客泊车车辆泊车和接驾过程中历史所产生的预警信息。
- 16: 查看代客泊车车辆历史泊车记录，回放泊车过程。
- 17: 查看代客泊车车辆历史召车记录，回放接驾过程。

| ID | WBS | Task | Duration | Start | Finish |
| --- | --- | --- | --- | --- | --- |
| 28 | 1.2.3 | **场端管理** | 6d | 2026-03-27 | 2026-04-01 |
| 29 | 1.2.3.1 | 停车场管理 | 1d | 2026-03-27 | 2026-03-27 |
| 30 | 1.2.3.2 | 出入口管理 | 1d | 2026-03-28 | 2026-03-28 |
| 31 | 1.2.3.3 | 停车楼层管理 | 1d | 2026-03-29 | 2026-03-29 |
| 32 | 1.2.3.4 | 停车区域管理 | 1d | 2026-03-30 | 2026-03-30 |
| 33 | 1.2.3.5 | 停车位管理 | 1d | 2026-03-31 | 2026-03-31 |
| 34 | 1.2.3.6 | 道闸管理 | 1d | 2026-04-01 | 2026-04-01 |
| 35 | 1.2.4 | **地图管理** | 3d | 2026-04-02 | 2026-04-04 |
| 36 | 1.2.4.1 | 高精地图管理 | 2d | 2026-04-02 | 2026-04-03 |
| 37 | 1.2.4.2 | 特征地图管理 | 2d | 2026-04-03 | 2026-04-04 |
| 38 | 1.2.5 | **客户管理** | 2d | 2026-04-05 | 2026-04-06 |
| 39 | 1.2.5.1 | 泊车用户管理 | 1d | 2026-04-05 | 2026-04-05 |
| 40 | 1.2.5.2 | 泊车客户管理 | 1d | 2026-04-06 | 2026-04-06 |
| 41 | 1.2.6 | 车辆管理 | 1d | 2026-04-07 | 2026-04-07 |
| 42 | 1.2.7 | 预警管理 | 1d | 2026-04-08 | 2026-04-08 |
| 43 | 1.2.8 | **算法模块** | 5d | 2026-04-09 | 2026-04-13 |
| 44 | 1.2.8.1 | 路径规划算法 | 3d | 2026-04-09 | 2026-04-11 |
| 45 | 1.2.8.2 | 泊位分配算法 | 3d | 2026-04-11 | 2026-04-13 |
| 46 | 1.2.9 | **信息发布模块** | 3d | 2026-04-13 | 2026-04-15 |
| 47 | 1.2.9.1 | 路径信息发布 | 2d | 2026-04-13 | 2026-04-14 |
| 48 | 1.2.9.2 | 泊位信息发布 | 2d | 2026-04-14 | 2026-04-15 |
| 49 | 1.2.9.3 | 预警信息发布 | 2d | 2026-04-14 | 2026-04-15 |
| 50 | 1.2.10 | **地图处理模块** | 5d | 2026-04-16 | 2026-04-20 |
| 51 | 1.2.10.1 | 地图解析 | 3d | 2026-04-16 | 2026-04-18 |
| 52 | 1.2.10.2 | 地图渲染 | 3d | 2026-04-18 | 2026-04-20 |

| ID | WBS | Task | Type | Duration | Start | Finish |
| --- | --- | --- | --- | --- | --- | --- |
| 53 | 1.3 | **信息服务系统 （web端）** | fixed end | 31d | 2026-03-27 | 2026-04-26 |
| 54 | 1.3.1 | **Map地图云服务** |  | 5d | 2026-04-20 | 2026-04-24 |
| 55 | 1.3.1.1 | 地图概览 |  | 1d | 2026-04-20 | 2026-04-20 |
| 56 | 1.3.1.2 | 地图分组 |  | 1d | 2026-04-21 | 2026-04-21 |
| 57 | 1.3.1.3 | 导入地图 |  | 1d | 2026-04-22 | 2026-04-22 |
| 58 | 1.3.1.4 | 导出地图 |  | 1d | 2026-04-23 | 2026-04-23 |
| 59 | 1.3.1.5 | 地图下发 |  | 1d | 2026-04-24 | 2026-04-24 |
| 60 | 1.3.2 | **交通事件管理** |  | 2d | 2026-04-24 | 2026-04-25 |
| 61 | 1.3.2.1 | 事件动态管理 |  | 1d | 2026-04-24 | 2026-04-24 |
| 62 | 1.3.2.2 | 事件发布记录 |  | 1d | 2026-04-25 | 2026-04-25 |
| 63 | 1.3.2.3 | 自动转发规则 |  | 1d | 2026-04-25 | 2026-04-25 |
| 64 | 1.3.3 | **标志标牌管理** |  | 31d | 2026-03-27 | 2026-04-26 |
| 65 | 1.3.3.1 | 标志标牌资源概览 |  | 1d | 2026-04-26 | 2026-04-26 |
| 66 | 1.3.3.2 | 导入标志标牌资源 |  | 1d | 2026-03-27 | 2026-03-27 |
| 67 | 1.3.3.3 | 标志标牌任务下发 |  | 1d | 2026-03-28 | 2026-03-28 |
| 68 | 1.4 | **应用管理系统 （web端）** | fixed end | 11d | 2026-04-28 | 2026-05-08 |
| 69 | 1.4.1 | **统一账户管理** |  | 3d | 2026-04-28 | 2026-04-30 |
| 70 | 1.4.1.1 | 组织管理 |  | 1d | 2026-04-28 | 2026-04-28 |
| 71 | 1.4.1.2 | 用户管理 |  | 1d | 2026-04-29 | 2026-04-29 |
| 72 | 1.4.1.3 | 角色管理 |  | 1d | 2026-04-30 | 2026-04-30 |
| 73 | 1.4.2 | **设备接入管理** |  | 8d | 2026-05-01 | 2026-05-08 |
| 74 | 1.4.2.1 | 设备类型管理 |  | 2d | 2026-05-01 | 2026-05-02 |
| 75 | 1.4.2.2 | 产品管理 |  | 3d | 2026-05-03 | 2026-05-05 |
| 76 | 1.4.2.3 | 设备管理 |  | 3d | 2026-05-05 | 2026-05-07 |
| 77 | 1.4.2.4 | 协议管理 |  | 1d | 2026-05-08 | 2026-05-08 |

| ID | WBS | Task | Type | Duration | Start | Finish |
| --- | --- | --- | --- | --- | --- | --- |
| 78 | 2 | **路侧融合感知系统** | fixed end | 48d | 2026-03-19 | 2026-05-05 |
| 79 | 2.1 | 感知子系统 |  | 13d | 2026-03-19 | 2026-03-31 |
| 80 | 2.2 | 边缘计算子系统 |  | 18d | 2026-03-31 | 2026-04-17 |
| 81 | 2.3 | 传输子系统 |  | 19d | 2026-04-17 | 2026-05-05 |
| 82 | 3 | **高精地图** | fixed end | 17d | 2026-04-01 | 2026-04-17 |
| 83 | 3.1 | 采集范围 |  | 2d | 2026-04-01 | 2026-04-02 |
| 84 | 3.2 | 地图要素 |  | 3d | 2026-04-03 | 2026-04-05 |
| 85 | 3.3 | 数据结构 |  | 6d | 2026-04-06 | 2026-04-11 |
| 86 | 3.4 | 数据格式 |  | 4d | 2026-04-11 | 2026-04-14 |
| 87 | 3.5 | 数据精度 |  | 3d | 2026-04-15 | 2026-04-17 |
| 88 | 4 | **车辆对接** |  | 12d | 2026-04-06 | 2026-04-17 |
| 89 | 4.1 | 标准接口 |  | 5d | 2026-04-06 | 2026-04-10 |
| 90 | 4.2 | 对接萝卜快跑 |  | 8d | 2026-04-10 | 2026-04-17 |
| 91 | 5 | **测试阶段** |  | 58d | 2026-03-19 | 2026-05-15 |
| 92 | 5.1 | 单元测试 |  | 51d | 2026-03-19 | 2026-05-08 |
| 93 | 5.2 | 集成测试 |  | 11d | 2026-05-05 | 2026-05-15 |
| 94 | 5.3 | 系统测试 |  | 11d | 2026-05-05 | 2026-05-15 |
| 95 | 5.4 | Bug修复 |  | 11d | 2026-05-05 | 2026-05-15 |
| 96 | 6 | **部署上线** |  | 7d | 2026-05-10 | 2026-05-16 |
| 97 | 6.1 | 生产环境部署 |  | 7d | 2026-05-10 | 2026-05-16 |
| 98 | 6.2 | 上线验证 |  | 7d | 2026-05-10 | 2026-05-16 |
| 99 | 6.3 | 项目交付 | fixed end | 7d | 2026-05-10 | 2026-05-16 |
